# Projecto SISB - para SIBS

Schedule from MS Project, 2006-03-01 to 2007-04-27.
cetelem

## Calendars

- Standard: Mon-Fri 08:00-12:00, 13:00-17:00; Sat-Sun off. Exceptions (off unless hours are given): 2006-04-14, 2006-04-25, 2006-05-01, 2006-06-13, 2006-06-15, 2006-08-15, 2006-10-05, 2006-11-01, 2006-12-01, 2006-12-08, 2006-12-25.

## Schedule

| ID | WBS | Task | Type | Duration | Start | Finish | Predecessors | Total slack | Free slack | Constraint |
| --- | --- | --- | --- | --- | --- | --- | --- | --- | --- | --- |
| 1 | 1 | **Projecto Adesão SIBS** |  | 291d | 2006-03-01 | 2007-04-27 |  | 0d |  |  |
| 2 | 1.1 | Fase de Especificações |  | 22d | 2006-03-01 | 2006-03-31 |  | 195d | 0d | start no earlier than 2006-03-01 |
| 3 | 1.2 | Fase de Desenvolvimento |  | 74d | 2006-03-31 | 2006-07-20 | 2 | 195d |  |  |
| 4 | 1.3 | Conf. Comunicações / Bancada Testes |  | 15d | 2006-05-22 | 2006-06-12 |  | 4d | 1.88d | start no earlier than 2006-05-22 |
| 5 | 1.4 | **Fase de Testes** |  | 97d | 2006-06-16 | 2006-11-02 |  | 2.12d |  |  |
| 6 | 1.4.1 | Testes de comunicações |  | 25d | 2006-06-16 | 2006-07-20 | 4 | 2.12d | 0d | start no earlier than 2006-06-15 |
| 7 | 1.4.2 | Testes globais (certificação) |  | 72d | 2006-07-21 | 2006-11-02 | 6 | 2.12d | 1.12d |  |
| 8 | 1.5 | Certificação SIBS/Cetelem | milestone | 0d | 2006-11-06 | 2006-11-06 | 7 | 1d | 0d | start no earlier than 2006-11-06 |
| 9 | 1.6 | Fase de Produção Controlada (Piloto) |  | 37d | 2006-11-06 | 2007-01-01 | 8 | 1d |  |  |
| 10 | 1.7 | Fase de Produção Normal | milestone | 0d | 2007-01-02 | 2007-01-02 | 9 | 0d |  | start no earlier than 2007-01-02 |
| 11 | 1.8 | **Migração** |  | 135d | 2006-10-16 | 2007-04-27 | 10 | 0d |  |  |
| 12 | 1.8.1 | Especificações técnicas |  | 13d | 2006-10-16 | 2006-11-03 |  | 2d | 0d | start no earlier than 2006-10-16 |
| 13 | 1.8.2 | Desenvolvimentos |  | 20d | 2006-11-03 | 2006-12-04 | 12 | 2d | 0d |  |
| 14 | 1.8.3 | Testes |  | 17d | 2006-12-04 | 2006-12-29 | 13 | 2d |  |  |
| 15 | 1.8.4 | Migração de lotes |  | 83d | 2007-01-02 | 2007-04-27 | 14, 10 | 0d |  |  |
