# Project Adhésion SISB

Schedule from MS Project, 2005-12-12 to 2007-01-02, A marks actual dates.
cetelem

## Calendars

- Standard: Mon-Fri 08:00-12:00, 13:00-17:00; Sat-Sun off. Exceptions (off unless hours are given): 2006-02-28, 2006-04-14, 2006-04-25, 2006-05-01, 2006-06-13, 2006-06-15, 2006-08-15, 2006-10-05, 2006-11-01, 2006-12-01, 2006-12-08, 2006-12-25.

## Schedule

| ID | WBS | Task | Type | Duration | Start | Finish | Predecessors | Complete | Remaining | Total slack | Free slack | Constraint |
| --- | --- | --- | --- | --- | --- | --- | --- | --- | --- | --- | --- | --- |
| 1 | 1 | **Projet Adhésion SIBS** |  | 264d | 2005-12-12 A | 2007-01-02 |  | 32% | 179.39d | 0d |  |  |
| 2 | 1.1 | **Analyse technique** |  | 57d | 2005-12-12 A | 2006-03-02 |  | 96% | 2.12d | 207d |  |  |
| 3 | 1.1.1 | Identification de besoins |  | 15d | 2005-12-12 A | 2006-01-02 A |  | 100% |  |  |  | start no earlier than 2005-12-12 |
| 4 | 1.1.2 | **Spécifications techniques** |  | 42d | 2006-01-02 A | 2006-03-02 |  | 95% | 2.12d | 207d |  |  |
| 5 | 1.1.2.1 | Emission de cartes |  | 7d | 2006-01-02 A | 2006-01-11 A | 3 | 100% |  |  |  |  |
| 6 | 1.1.2.2 | Gestion de cartes |  | 5d | 2006-01-11 A | 2006-01-18 A | 5 | 100% |  |  |  |  |
| 7 | 1.1.2.3 | Gestion de soldes de comptes |  | 5d | 2006-01-18 A | 2006-01-25 A | 6 | 100% |  |  |  |  |
| 8 | 1.1.2.4 | Mouvements financiers |  | 10d | 2006-01-25 A | 2006-02-08 A | 7 | 100% |  |  |  |  |
| 9 | 1.1.2.5 | Compensation |  | 10d | 2006-02-08 A | 2006-02-22 | 8 | 79% | 2.12d | 212d |  |  |
| 10 | 1.1.2.6 | Facturation |  | 5d | 2006-02-22 A | 2006-03-02 A | 9 | 100% |  |  |  |  |
| 11 | 1.1.3 | Cahier d'analyse technique | milestone | 0d | 2006-03-02 | 2006-03-02 | 10 |  |  | 162.76d | 0d |  |
| 12 | 1.2 | **Développements** |  | 70d | 2006-03-02 A | 2006-06-14 |  | 45% | 38.24d | 94.88d |  |  |
| 13 | 1.2.1 | Emission de cartes |  | 12d | 2006-03-02 A | 2006-03-20 | 11 | 82% | 2.12d | 152.88d | 0d |  |
| 14 | 1.2.2 | Gestion de cartes |  | 8d | 2006-03-20 A | 2006-03-30 A | 13 | 100% |  |  |  |  |
| 15 | 1.2.3 | Gestion de soldes de comptes |  | 8d | 2006-03-30 A | 2006-04-11 A | 14 | 100% |  |  |  |  |
| 16 | 1.2.4 | Mouvements financiers |  | 18d | 2006-04-11 A | 2006-05-10 | 15 | 33% | 12.12d | 0d |  |  |
| 17 | 1.2.5 | Compensation |  | 18d | 2006-05-10 | 2006-06-05 | 16 |  |  | 0d |  |  |
| 18 | 1.2.6 | Facturation |  | 6d | 2006-06-05 | 2006-06-14 | 17 |  |  | 0d |  |  |
| 19 | 1.3 | **Testes** |  | 143d | 2006-03-20 A | 2006-10-16 |  | 12% | 126.24d | 52d |  |  |
| 20 | 1.3.1 | Teste unitaires |  | 59d | 2006-03-20 A | 2006-06-16 | 13 | 29% | 42.12d | 136d |  |  |
| 21 | 1.3.2 | Testes globaux (certification SIBS) |  | 85d | 2006-06-14 | 2006-10-16 | 18 |  |  | 0d |  |  |
| 22 | 1.4 | Phase Pilote Production |  | 52d | 2006-10-16 | 2007-01-02 | 21 |  |  | 0d |  |  |
