# Project Adhésion SISB

Schedule from MS Project, 2005-12-12 to 2007-07-13, A marks actual dates.
cetelem

## Calendars

- Standard: Mon-Fri 08:00-12:00, 13:00-17:00; Sat-Sun off. Exceptions (off unless hours are given): 2006-02-28, 2006-04-14, 2006-04-25, 2006-05-01, 2006-06-13, 2006-06-15, 2006-08-15, 2006-10-05, 2006-11-01, 2006-12-01, 2006-12-08, 2006-12-25.

## Schedule

| ID | WBS | Task | Type | Duration | Start | Finish | Predecessors | Complete | Remaining | Total slack | Free slack | Constraint |
| --- | --- | --- | --- | --- | --- | --- | --- | --- | --- | --- | --- | --- |
| 1 | 1 | **Projet Adhésion SIBS** |  | 402d | 2005-12-12 A | 2007-07-13 |  | 39% | 245.84d | 0d |  |  |
| 2 | 1.1 | **Analyse technique** |  | 222d | 2005-12-12 A | 2006-10-30 |  | 60% | 88.8d | 180d |  |  |
| 3 | 1.1.1 | Identification de besoins |  | 15d | 2005-12-12 A | 2006-01-02 A |  | 100% |  |  |  | start no earlier than 2005-12-12 |
| 4 | 1.1.2 | **Spécifications techniques** |  | 42d | 2006-01-02 A | 2006-03-02 A |  | 100% |  |  |  |  |
| 5 | 1.1.2.1 | Emission de cartes |  | 7d | 2006-01-02 A | 2006-01-11 A | 3 | 100% |  |  |  |  |
| 6 | 1.1.2.2 | Gestion de cartes |  | 5d | 2006-01-11 A | 2006-01-18 A | 5 | 100% |  |  |  |  |
| 7 | 1.1.2.3 | Gestion de soldes de comptes |  | 5d | 2006-01-18 A | 2006-01-25 A | 6 | 100% |  |  |  |  |
| 8 | 1.1.2.4 | Mouvements financiers |  | 10d | 2006-01-25 A | 2006-02-08 A | 7 | 100% |  |  |  |  |
| 9 | 1.1.2.5 | Compensation |  | 10d | 2006-02-08 A | 2006-02-22 A | 8 | 100% |  |  |  |  |
| 10 | 1.1.2.6 | Facturation |  | 5d | 2006-02-22 A | 2006-03-02 A | 9 | 100% |  |  |  |  |
| 11 | 1.1.3 | Cahier d'analyse technique | milestone | 0d | 2006-03-02 | 2006-03-02 | 10 |  |  | 250d |  |  |
| 12 | 1.1.4 | Definition des cenarios ChargeBack |  | 19d | 2006-09-04 | 2006-09-29 |  |  |  | 200d |  | start no earlier than 2006-09-04 |
| 13 | 1.1.5 | Definition des conversions et offre carte ??? |  | 19d | 2006-10-02 | 2006-10-30 |  |  |  | 180d |  | start no earlier than 2006-10-02 |
| 14 | 1.2 | **Développements** |  | 108d | 2006-03-02 A | 2006-08-08 |  | 96% | 4.41d | 237d |  |  |
| 15 | 1.2.1 | Emission de cartes |  | 12d | 2006-03-02 A | 2006-03-20 A | 11 | 100% |  |  |  |  |
| 16 | 1.2.2 | Gestion de cartes |  | 8d | 2006-03-20 A | 2006-03-30 A | 15 | 100% |  |  |  |  |
| 17 | 1.2.3 | Gestion de soldes de comptes |  | 15d | 2006-03-30 A | 2006-04-21 A | 16 | 100% |  |  |  |  |
| 18 | 1.2.4 | Mouvements financiers |  | 25d | 2006-04-22 A | 2006-05-30 A | 17 | 100% |  |  |  |  |
| 19 | 1.2.5 | Compensation |  | 35d | 2006-06-01 A | 2006-07-24 A | 18 | 100% |  |  |  |  |
| 20 | 1.2.6 | Facturation |  | 6d | 2006-07-31 A | 2006-08-08 |  | 31% | 4.12d | 237d |  | start no earlier than 2006-07-31 |
| 21 | 1.3 | **Testes** |  | 170d | 2006-05-02 A | 2007-01-05 |  | 35% | 111.34d | 135d |  |  |
| 22 | 1.3.1 | Teste unitaires |  | 84d | 2006-05-02 A | 2006-08-31 | 15 | 70% | 25d | 221d |  |  |
| 23 | 1.3.2 | Caractherisations SIBS | milestone | 0d | 2006-07-28 | 2006-07-28 |  |  |  | 240d | 0d | start no earlier than 2006-07-28 |
| 24 | 1.3.3 | Creation des cartes clients test |  | 1d | 2006-07-28 | 2006-07-31 | 23 |  |  | 243d |  | finish no earlier than 2006-07-28 |
| 25 | 1.3.4 | Reception des cartes superviseur | milestone | 0d | 2006-08-04 | 2006-08-04 | 23 |  |  | 235d | 2d | start no earlier than 2006-08-04 |
| 26 | 1.3.5 | Reception des cartes clients | milestone | 0d | 2006-08-04 | 2006-08-04 | 23 |  |  | 235d | 2d | start no earlier than 2006-08-04 |
| 27 | 1.3.6 | Tests "Bancada de testes" et Reseau |  | 4d | 2006-08-08 | 2006-08-14 | 25, 26 |  |  | 233d | 0d | start no earlier than 2006-08-08 |
| 28 | 1.3.7 | Envoie du pinpad et cartes au Corporate | milestone | 0d | 2006-08-14 | 2006-08-14 | 27 |  |  | 233d |  | start no earlier than 2006-08-04 |
| 29 | 1.3.8 | Recette Stéria (PRT) |  | 23d | 2006-09-04 | 2006-10-06 |  |  |  | 5d | 0.88d | start no earlier than 2006-09-04 |
| 30 | 1.3.9 | Recette Cetelem Corporate/Portugal |  | 34d | 2006-10-09 | 2006-11-24 | 29 |  |  | 4.12d | 0d | start no earlier than 2006-10-08 |
| 31 | 1.3.10 | Recette utilisateur Cetelem Portugal |  | 18d | 2006-11-27 | 2006-12-22 | 30 |  |  | 4.12d | 1.12d | start no earlier than 2006-10-08 |
| 32 | 1.3.11 | Mise en production |  | 7d | 2006-12-27 | 2007-01-05 | 31 |  |  | 3d | 0.88d | start no earlier than 2006-12-27 |

| ID | WBS | Task | Type | Duration | Start | Finish | Predecessors | Total slack | Free slack | Constraint |
| --- | --- | --- | --- | --- | --- | --- | --- | --- | --- | --- |
| 33 | 1.4 | **Phase Pilote Production** |  | 59d | 2007-01-08 | 2007-03-29 | 32 | 2.12d |  |  |
| 34 | 1.4.1 | Emission cartes pilote |  | 10d | 2007-01-08 | 2007-01-19 |  | 2.12d | 0d | finish no earlier than 2007-01-19 |
| 35 | 1.4.2 | Tests utilisation et chaine de traitement |  | 49d | 2007-01-22 | 2007-03-29 | 34 | 2.12d | 1.12d | start no earlier than 2007-01-08 |
| 36 | 1.4.3 | Correction et mise en production |  | 49d | 2007-01-22 | 2007-03-29 | 34 | 2.12d | 1.12d | start no earlier than 2007-01-08 |
| 37 | 1.5 | **Lancement et conversion SIBS** |  | 74d | 2007-04-02 | 2007-07-13 | 36, 35 | 0d |  |  |
| 38 | 1.5.1 | Emission cartes SIBS | milestone | 0d | 2007-04-02 | 2007-04-02 |  | 74d |  | start no earlier than 2007-04-02 |
| 39 | 1.5.2 | Conversion de cartes actives |  | 34d | 2007-04-02 | 2007-05-18 |  | 1d |  | start no earlier than 2007-04-02 |
| 40 | 1.5.3 | Conversion de cartes inactives |  | 39d | 2007-05-21 | 2007-07-13 | 39 | 0d |  | start no earlier than 2007-05-21 |
